# cms项目时间安排表

Schedule from MS Project, 2013-12-26 to 2014-01-15, A marks actual dates.

## Calendars

- 标准: Mon-Sat 08:30-12:00, 13:30-18:00; Sun off. Exceptions (off unless hours are given): 2014-01-01, 2014-01-04.

## Resources

| Resource |
| --- |
| 章深鹏 |
| 曹恢弘 |
| 冯明创 |
| 姜晟 |
| 杨美化 |
| 赵春森 |
| 黄禹轶 |

## Schedule

| ID | Task | Duration | Start | Finish | Predecessors | Complete | Remaining | Total slack | Free slack | Resources | Work | Actual work |
| --- | --- | --- | --- | --- | --- | --- | --- | --- | --- | --- | --- | --- |
| 1 | 远程回放Device组件 | 2d | 2013-12-26 08:30 A | 2013-12-27 18:00 A |  | 100% |  |  |  | 杨美化 | 16h | 16h |
| 2 | 远程回放插件 | 1d | 2013-12-26 08:30 A | 2013-12-26 18:00 A |  | 100% |  |  |  | 姜晟 | 8h | 8h |
| 3 | 远程回放时间棒及检索逻辑接入 | 4d | 2013-12-28 08:30 A | 2014-01-02 18:00 A | 2, 1 | 100% |  |  |  | 黄禹轶; 赵春森 | 64h | 64h |
| 4 | 远程回放页面回放控制逻辑 | 1d | 2014-01-03 08:30 A | 2014-01-03 18:00 A | 3 | 100% |  |  |  | 赵春森; 黄禹轶 | 16h | 16h |
| 5 | commonlib组件存储设置接口文档 | 1d | 2013-12-26 08:30 A | 2013-12-26 18:00 A |  | 100% |  |  |  | 章深鹏 | 8h | 8h |
| 6 | commonlib组件存储设置测试用例文档 | 1d | 2013-12-27 08:30 A | 2013-12-27 18:00 A | 5, 2 | 100% |  |  |  | 姜晟 | 8h | 8h |
| 7 | commonlib组件存储设置接口测试代码 | 0.5d | 2013-12-28 08:30 A | 2013-12-28 14:00 A | 6 | 100% |  |  |  | 姜晟 | 4h | 4h |
| 8 | commonlib组件存储设置接口开发 | 0.5d | 2013-12-28 14:00 A | 2013-12-28 18:00 A | 7, 1 | 100% |  |  |  | 杨美化 | 4h | 4h |
| 9 | commonlib组件封装存储设置接口 | 0.5d | 2013-12-30 08:30 A | 2013-12-30 14:00 A | 8 | 100% |  |  |  | 杨美化 | 4h | 4h |
| 10 | commonlib组件录像时间表设置接口文档 | 1d | 2013-12-26 08:30 A | 2013-12-26 18:00 A |  | 100% |  |  |  | 冯明创 | 8h | 8h |
| 11 | commonlib组件录像时间表设置测试用例文档 | 1d | 2013-12-28 14:00 A | 2013-12-30 14:00 A | 7, 10 | 100% |  |  |  | 姜晟 | 8h | 8h |
| 12 | commonlib组件录像时间表设置测试代码 | 0.5d | 2013-12-30 14:00 A | 2013-12-30 18:00 A | 11 | 100% |  |  |  | 姜晟 | 4h | 4h |
| 13 | commonlib组件录像时间表代码开发 | 0.5d | 2013-12-31 08:30 A | 2013-12-31 14:00 A | 12 | 100% |  |  |  | 曹恢弘 | 4h | 4h |
| 14 | commonlib插件封装录像时间表接口 | 0.5d | 2013-12-31 14:00 A | 2013-12-31 18:00 A | 13 | 100% |  |  |  | 曹恢弘 | 4h | 4h |
| 15 | commonlib组件通用设置接口文档 | 1d | 2013-12-27 08:30 A | 2013-12-27 18:00 A | 5 | 100% |  |  |  | 章深鹏 | 8h | 8h |
| 16 | commonlib组件通用设置测试用例文档 | 1d | 2013-12-28 08:30 A | 2013-12-28 18:00 A | 15, 10 | 100% |  |  |  | 冯明创 | 8h | 8h |
| 17 | commonlib组件通用设置测试代码 | 0.5d | 2013-12-30 08:30 A | 2013-12-30 14:00 A | 16 | 100% |  |  |  | 冯明创 | 4h | 4h |
| 18 | commonlib组件通用设置接口开发 | 0.5d | 2013-12-30 14:00 A | 2013-12-30 18:00 A | 17 | 100% |  |  |  | 杨美化 | 4h | 4h |
| 19 | commonlib组件通用设置插件接口封装 | 0.5d | 2013-12-31 08:30 A | 2013-12-31 14:00 A | 18 | 100% |  |  |  | 杨美化 | 4h | 4h |
| 20 | settings activiy接入设置 | 2.5d | 2013-12-30 14:00 A | 2014-01-02 18:00 A | 17 | 100% |  |  |  | 冯明创 | 20h | 20h |
| 21 | 页面接入通用设置，录像时间表，存储设置 | 0.5d | 2014-01-06 08:30 A | 2014-01-06 14:00 A | 4, 15 | 100% |  |  |  | 黄禹轶 | 4h | 4h |
| 22 | record组件录像接口文档和preview windows插件实现手动录像接口文档 | 1d | 2013-12-28 08:30 A | 2013-12-28 18:00 A | 15 | 100% |  |  |  | 章深鹏 | 8h | 8h |
| 23 | record组件录像测试用例文档 | 1d | 2013-12-31 08:30 A | 2013-12-31 18:00 A | 12 | 100% |  |  |  | 姜晟 | 8h | 8h |
| 24 | record组件录像接口测试代码 | 0.5d | 2014-01-02 08:30 A | 2014-01-02 14:00 A | 23 | 100% |  |  |  | 姜晟 | 4h | 4h |
| 25 | record组件录像接口代码 | 3d | 2013-12-30 08:30 A | 2014-01-02 18:00 | 22 | 33% | 2d | 9.5d |  | 章深鹏 | 24h | 8h |
| 26 | preview windows 插件封装record组件实现手动录像接口 | 1d | 2013-12-31 14:00 A | 2014-01-02 14:00 A | 19 | 100% |  |  |  | 杨美化 | 8h | 8h |
| 27 | preview windows 手动录像接口文档 | 1d | 2014-01-03 08:30 A | 2014-01-03 18:00 A | 20 | 100% |  |  |  | 冯明创 | 8h | 8h |
| 28 | preview windows插件手动录像 测试用例文档 | 1d | 2014-01-06 08:30 A | 2014-01-06 18:00 A | 24, 27 | 100% |  |  |  | 姜晟 | 8h | 8h |
| 29 | preview windows 插件手动录像测试代码 | 0.5d | 2014-01-07 08:30 A | 2014-01-07 14:00 A | 28 | 100% |  |  |  | 姜晟 | 4h | 4h |
| 30 | 页面接入手动录像 | 1d | 2014-01-06 14:00 | 2014-01-07 14:00 | 21, 22 |  |  | 1d | 0d | 赵春森; 黄禹轶 | 16h |  |
| 31 | local player 组件本地录像检索接口文档 | 1d | 2014-01-03 08:30 A | 2014-01-03 18:00 A | 25 | 100% |  |  |  | 章深鹏 | 8h | 8h |
| 32 | local player 组件本地录像检索接口测试用例文档 | 1d | 2014-01-07 14:00 A | 2014-01-08 14:00 A | 31, 29 | 100% |  |  |  | 姜晟 | 8h | 8h |
| 33 | local player 组件本地录像检索接口测试用例代码 | 0.5d | 2014-01-08 14:00 A | 2014-01-08 18:00 A | 32 | 100% |  |  |  | 姜晟 | 4h | 4h |
| 34 | local player 组件本地录像检索代码 | 0.5d | 2014-01-09 08:30 A | 2014-01-09 14:00 A | 33, 26 | 100% |  |  |  | 杨美化 | 4h | 4h |
| 35 | record player 插件封装local player组件检索接口 | 0.5d | 2014-01-09 14:00 | 2014-01-09 18:00 | 34 |  |  | 0.5d |  | 杨美化 | 4h |  |
| 36 | 页面接入本地录像检索 | 2d | 2014-01-07 14:00 | 2014-01-09 14:00 | 30, 31 |  |  | 1d | 0d | 黄禹轶; 赵春森 | 32h |  |
| 37 | local player 组件同步回放接口文档 | 1d | 2014-01-06 08:30 A | 2014-01-06 18:00 A | 27 | 100% |  |  |  | 冯明创 | 8h | 8h |
| 38 | local player 组件同步回放接口用例文档 | 1d | 2014-01-09 08:30 | 2014-01-09 18:00 | 37, 33 |  |  | 0d |  | 姜晟 | 8h |  |
| 39 | local player 组件同步回放接口测试代码 | 0.5d | 2014-01-10 08:30 | 2014-01-10 14:00 | 38 |  |  | 0d |  | 姜晟 | 4h |  |
| 40 | local player组件同步回放接口代码 | 2d | 2014-01-10 14:00 | 2014-01-13 14:00 | 39, 35 |  |  | 0d |  | 杨美化 | 16h |  |
| 41 | local player 组件同步回放接口封入recordplayer插件 | 2d | 2014-01-13 14:00 | 2014-01-15 14:00 | 40 |  |  | 0d |  | 杨美化 | 16h |  |
| 42 | 页面接入同步回放 | 2d | 2014-01-09 14:00 | 2014-01-11 14:00 | 37, 36 |  |  | 1d | 0d | 赵春森; 黄禹轶 | 32h |  |
| 43 | 远程备份 device组件备份接口文档（插件同） | 1d | 2014-01-07 08:30 A | 2014-01-07 18:00 A | 37 | 100% |  |  |  | 冯明创 | 8h | 8h |
| 44 | 远程备份device组件备份接口测试用例文档 | 1d | 2014-01-08 08:30 | 2014-01-08 18:00 | 31, 43 |  |  | 4d | 0d | 章深鹏 | 8h |  |
| 45 | 远程备份device组件备份接口测试代码 | 0.5d | 2014-01-09 08:30 | 2014-01-09 14:00 | 44 |  |  | 4d | 0d | 章深鹏 | 4h |  |
| 46 | 远程备份device组件备份接口代码 | 0.5d | 2014-01-09 14:00 | 2014-01-09 18:00 | 45 |  |  | 4d | 0d | 章深鹏 | 4h |  |
| 47 | 远程备份device组件封装插件 | 0.5d | 2014-01-10 08:30 | 2014-01-10 14:00 | 46 |  |  | 4d |  | 章深鹏 | 4h |  |
| 48 | 页面接入远程备份 | 0.5d | 2014-01-11 14:00 | 2014-01-11 18:00 | 43, 42 |  |  | 1d |  | 赵春森; 黄禹轶 | 8h |  |
